# Software Development

Schedule from MS Project, 2025-06-03 to 2026-12-01, costs in $.

## Calendars

- Standard: Mon-Fri 08:00-12:00, 13:00-17:00; Sat-Sun off.

## Resources

| Resource | Group | Rate |
| --- | --- | --- |
| Project Manager 3 | Project Managers | 100 |
| Project Manager 4 | Project Managers | 100 |
| Requirement Engineer 1 | Requirement Engineers | 80 |
| Programmer 1 | Programmers | 95 |
| Test Engineer 1 | Test Engineers | 75 |
| System Engineer 1 | System Engineers | 90 |
| Documentation Engineer 1 | Documentation Engineers | 60 |
| Project Manager 5 | Project Managers | 100 |
| Requirement Engineer 2 | Requirement Engineers | 80 |
| Requirement Engineer 7 | Requirement Engineers | 80 |
| Requirement Engineer 8 | Requirement Engineers | 80 |
| Requirement Engineer 102 | Requirement Engineers | 80 |
| Requirement Engineer 103 | Requirement Engineers | 80 |
| Requirement Engineer 117 | Requirement Engineers | 80 |
| Requirement Engineer 118 | Requirement Engineers | 80 |
| Requirement Engineer 119 | Requirement Engineers | 80 |
| System Engineer 7 | System Engineers | 90 |
| System Engineer 2 | System Engineers | 90 |
| System Engineer 8 | System Engineers | 90 |
| System Engineer 9 | System Engineers | 90 |
| System Engineer 204 | System Engineers | 90 |
| System Engineer 205 | System Engineers | 90 |
| System Engineer 501 | System Engineers | 90 |
| Programmer 7 | Programmers | 95 |
| Programmer 8 | Programmers | 95 |
| Programmer 9 | Programmers | 95 |
| Programmer 10 | Programmers | 95 |
| Programmer 202 | Programmers | 95 |
| Programmer 203 | Programmers | 95 |
| Programmer 205 | Programmers | 95 |
| Test Engineer 2 | Test Engineers | 75 |
| Test Engineer 3 | Test Engineers | 75 |
| Test Engineer 4 | Test Engineers | 75 |
| Test Engineer 302 | Test Engineers | 75 |
| Test Engineer 2403 | Test Engineers | 75 |
| Test Engineer 404 | Test Engineers | 75 |
| Test Engineer 405 | Test Engineers | 75 |
| Documentation Engineer 105 | Documentation Engineers | 60 |
| Documentation Engineer 203 | Documentation Engineers | 60 |
| Documentation Engineer 204 | Documentation Engineers | 60 |
| Documentation Engineer 205 | Documentation Engineers | 60 |
| Documentation Engineer 206 | Documentation Engineers | 60 |

## Schedule

| ID | WBS | Task | Duration | Start | Finish | Predecessors | Total slack | Free slack | Constraint | Resources | Work | Cost |
| --- | --- | --- | --- | --- | --- | --- | --- | --- | --- | --- | --- | --- |
| 1 | 1 | **Project plan** | 17d | 2025-06-03 | 2025-06-25 |  |  |  |  |  | 603.25h | 51,909.98 |
| 2 | 1.1 | Write plan | 37.4h | 2025-06-03 | 2025-06-09 |  | 0.5d | 0d | start no earlier than 2025-06-03 | Project Manager 3 | 37.4h | 3,740 |
| 3 | 1.2 | **Review plan** | 11d | 2025-06-09 | 2025-06-24 |  |  |  |  |  | 551.65h | 46,749.98 |
| 4 | 1.2.1 | Preparation for review | 46.75h | 2025-06-09 | 2025-06-17 | 2 | 0.5d | 0d |  | Project Manager 5; Requirement Engineer 1; System Engineer 1; Documentation Engineer 1; Programmer 1; Test Engineer 1; Project Manager 4 | 327.25h | 28,050 |
| 5 | 1.2.2 | Review meeting | 37.4h | 2025-06-17 | 2025-06-24 | 4 | 0.5d | 0d |  | Project Manager 3; Documentation Engineer 105; Programmer 7; Requirement Engineer 2; System Engineer 2; Test Engineer 2 | 224.4h | 18,699.98 |
| 6 | 1.3 | Rework | 14.2h | 2025-06-24 | 2025-06-25 | 5 | 0.5d | 0d |  | Project Manager 3 | 14.2h | 1,420 |
| 7 | 2 | **Requirements** | 15d | 2025-06-25 | 2025-07-16 |  |  |  |  |  | 435.4h | 34,832 |
| 8 | 2.1 | Write requirements | 31.2h | 2025-06-25 | 2025-07-01 | 6 | 0.5d | 0d |  | Requirement Engineer 1; Requirement Engineer 2 | 62.4h | 4,992 |
| 9 | 2.2 | Write use case model | 15.2h | 2025-06-25 | 2025-06-27 | 6 | 2.61d | 2d |  | Requirement Engineer 7; Requirement Engineer 8 | 30.4h | 2,432 |
| 10 | 2.3 | **Review requirements** | 11d | 2025-06-27 | 2025-07-11 |  |  |  |  |  | 284.4h | 22,752 |
| 11 | 2.3.1 | Preparation for review | 38.5h | 2025-07-01 | 2025-07-08 | 8, 9 | 0.5d | 0d | start no earlier than 2025-06-27 | Requirement Engineer 102; Requirement Engineer 103; Requirement Engineer 117; Requirement Engineer 118 | 154h | 12,320 |
| 12 | 2.3.2 | Review meeting | 26.08h | 2025-07-08 | 2025-07-11 | 11 | 0.5d | 0d |  | Requirement Engineer 1; Requirement Engineer 2; Requirement Engineer 7; Requirement Engineer 103; Requirement Engineer 119 | 130.4h | 10,432 |
| 13 | 2.4 | Rework | 19.4h | 2025-07-11 | 2025-07-16 | 12 | 0.5d | 0d |  | Requirement Engineer 1; Requirement Engineer 7; Requirement Engineer 2 | 58.2h | 4,656 |
| 14 | 3 | **Analysis** | 6d | 2025-07-16 | 2025-07-23 |  |  |  |  |  | 120.6h | 10,854 |
| 15 | 3.1 | Write analysis document | 9.6h | 2025-07-16 | 2025-07-17 | 13 | 0.5d | 0d |  | System Engineer 1; System Engineer 2 | 19.2h | 1,728 |
| 16 | 3.2 | **Review analysis document** | 3d | 2025-07-17 | 2025-07-21 |  |  |  |  |  | 68.4h | 6,156 |
| 17 | 3.2.1 | Preparation for analysis document | 9.6h | 2025-07-17 | 2025-07-18 | 15 | 0.5d | 0d |  | System Engineer 7; System Engineer 8; System Engineer 204; System Engineer 205 | 38.4h | 3,456 |
| 18 | 3.2.2 | Review meeting | 6h | 2025-07-18 | 2025-07-21 | 17 | 0.5d | 0d |  | System Engineer 1; System Engineer 2; System Engineer 9; System Engineer 501; System Engineer 204 | 30h | 2,700 |
| 19 | 3.3 | Rework | 16.5h | 2025-07-21 | 2025-07-23 | 18 | 0.5d | 0d |  | System Engineer 1; System Engineer 2 | 33h | 2,970 |
| 20 | 4 | **Design** | 17d | 2025-07-23 | 2025-08-14 |  |  |  |  |  | 715.73h | 64,415.7 |
| 21 | 4.1 | Write DD | 26.8h | 2025-07-23 | 2025-07-28 | 19 | 340.5d | 0d |  | System Engineer 7; System Engineer 8 | 53.6h | 4,824 |
| 22 | 4.2 | **Review DD** | 10d | 2025-07-28 | 2025-08-08 |  |  |  |  |  | 290.33h | 26,129.7 |
| 23 | 4.2.1 | Preparation for DD | 44.67h | 2025-07-28 | 2025-08-05 | 21 | 340.5d | 0d |  | System Engineer 9; System Engineer 204; System Engineer 205; System Engineer 501 | 178.68h | 16,081.2 |
| 24 | 4.2.2 | Review meeting | 22.33h | 2025-08-05 | 2025-08-08 | 23 | 340.5d | 0d |  | System Engineer 1; System Engineer 2; System Engineer 7; System Engineer 8; System Engineer 9 | 111.65h | 10,048.5 |
| 25 | 4.3 | Rework | 17.6h | 2025-08-08 | 2025-08-12 | 24 | 340.5d |  |  | System Engineer 7; System Engineer 8 | 35.2h | 3,168 |
| 26 | 4.4 | Write DM | 69h | 2025-07-23 | 2025-08-05 | 19 | 0.5d | 0d |  | System Engineer 204; System Engineer 205 | 138h | 12,420 |

Notes:
- 4: PM3 absent
- 5: PM3 returns
- 11: RE1,RE2,RE7 absent
- 12: RE1,RE2,RE7 returns
- 17: SE1,SE2 absent
- 18: SE1,SE2 returns
- 23: SE7,SE8 absent
- 24: SE7,SE8 returns

| ID | WBS | Task | Duration | Start | Finish | Predecessors | Total slack | Free slack | Resources | Work | Cost |
| --- | --- | --- | --- | --- | --- | --- | --- | --- | --- | --- | --- |
| 27 | 4.5 | **Review DM** | 5d | 2025-08-05 | 2025-08-11 |  |  |  |  | 161h | 14,490 |
| 28 | 4.5.1 | Preparation for DM | 23h | 2025-08-05 | 2025-08-08 | 26 | 0.5d | 0d | System Engineer 1; System Engineer 2; System Engineer 9; System Engineer 7 | 92h | 8,280 |
| 29 | 4.5.2 | Review meeting | 13.8h | 2025-08-08 | 2025-08-11 | 28 | 0.5d | 0d | System Engineer 204; System Engineer 205; System Engineer 8; System Engineer 9; System Engineer 501 | 69h | 6,210 |
| 30 | 4.6 | Rework | 18.8h | 2025-08-11 | 2025-08-14 | 29 | 0.5d | 0d | System Engineer 204; System Engineer 205 | 37.6h | 3,384 |
| 31 | 5 | **Coding and unit test** | 125d | 2025-08-14 | 2026-02-04 |  |  |  |  | 3042.44h | 271,239.8 |
| 32 | 5.1 | Write code | 345h | 2025-08-14 | 2025-10-14 | 30 | 0.5d | 0d | Programmer 1; Programmer 7; Programmer 8; Programmer 9 | 1380h | 131,100 |
| 33 | 5.2 | **Unit testing** | 82d | 2025-10-14 | 2026-02-04 |  |  |  |  | 1305.6h | 106,240 |
| 34 | 5.2.1 | Prepare/execute test cases | 34.8d | 2025-10-14 | 2025-12-02 | 32 | 0.5d | 0d | Test Engineer 1; Test Engineer 2 | 556.8h | 41,760 |
| 35 | 5.2.2 | Fix found defects | 26d | 2025-12-02 | 2026-01-07 | 34 | 0.5d | 0d | Programmer 10; Programmer 202 | 416h | 39,520 |
| 36 | 5.2.3 | Test fixed defects | 20.8d | 2026-01-07 | 2026-02-04 | 35 | 0.5d | 0d | Test Engineer 3; Test Engineer 4 | 332.8h | 24,960 |
| 37 | 5.3 | **Code inspection** | 15d | 2025-10-14 | 2025-11-03 |  |  |  |  | 356.84h | 33,899.8 |
| 38 | 5.3.1 | Preparation for code inspection | 31.36h | 2025-10-14 | 2025-10-20 | 32 | 67.76d | 0d | Programmer 203; Programmer 205; Programmer 8; Programmer 7 | 125.44h | 11,916.8 |
| 39 | 5.3.2 | Code inspection meeting | 21.56h | 2025-10-20 | 2025-10-22 | 38 | 67.76d | 0d | Programmer 1; Programmer 10; Programmer 203; Programmer 202; Programmer 7 | 107.8h | 10,241 |
| 40 | 5.3.3 | Rework | 61.8h | 2025-10-22 | 2025-11-03 | 39 | 67.76d | 67.26d | Programmer 1; Programmer 7 | 123.6h | 11,742 |
| 41 | 6 | **System integration testing** | 73d | 2026-02-04 | 2026-05-15 |  |  |  |  | 1274.45h | 101,743.75 |
| 42 | 6.1 | Write test plan | 29.8d | 2026-02-04 | 2026-03-18 | 36, 40 | 0.5d | 0d | Test Engineer 1; Test Engineer 2 | 476.8h | 35,760 |
| 43 | 6.2 | **Review TP** | 11d | 2026-03-18 | 2026-04-01 |  |  |  |  | 292.85h | 21,963.75 |
| 44 | 6.2.1 | Preparation for TP | 29.8h | 2026-03-18 | 2026-03-24 | 42 | 0.5d | 0d | Test Engineer 3; Test Engineer 4; Test Engineer 302; Test Engineer 404 | 119.2h | 8,940 |
| 45 | 6.2.2 | Review TP meeting | 24.83h | 2026-03-24 | 2026-03-27 | 44 | 0.5d | 0d | Test Engineer 1; Test Engineer 2403; Test Engineer 404; Test Engineer 405; Test Engineer 2 | 124.15h | 9,311.25 |
| 46 | 6.2.3 | Rework | 24.75h | 2026-03-27 | 2026-04-01 | 45 | 0.5d | 0d | Test Engineer 1; Test Engineer 2 | 49.5h | 3,712.5 |
| 47 | 6.3 | Execute TP | 4.6d | 2026-04-01 | 2026-04-08 | 46 | 0.5d | 0d | Test Engineer 302; Test Engineer 2403 | 73.6h | 5,520 |
| 48 | 6.4 | Fix found defects | 19.25d | 2026-04-08 | 2026-05-05 | 47 | 0.5d | 0d | Programmer 202; Programmer 203 | 308h | 29,260 |
| 49 | 6.5 | Test fixed defects | 7.7d | 2026-05-05 | 2026-05-15 | 48 | 0.5d | 0d | Test Engineer 404; Test Engineer 405 | 123.2h | 9,240 |
| 50 | 7 | **Load, stress and performance testing** | 110d | 2026-05-15 | 2026-10-15 |  |  |  |  | 1990.16h | 153,998 |
| 51 | 7.1 | Write test plan | 50.25d | 2026-05-15 | 2026-07-24 | 49 | 0.5d | 0d | Test Engineer 3; Test Engineer 4 | 804h | 60,300 |

Notes:
- 28: SE204,SE205 absent
- 29: SE204,SE205 returns
- 38: PE1,PE7 absent
- 39: PE1,PE7 returns
- 44: TE1, TE2 absent
- 45: TE1, TE2 returns

| ID | WBS | Task | Duration | Start | Finish | Predecessors | Total slack | Free slack | Resources | Work | Cost |
| --- | --- | --- | --- | --- | --- | --- | --- | --- | --- | --- | --- |
| 52 | 7.2 | **Review TP** | 17d | 2026-07-24 | 2026-08-17 |  |  |  |  | 494.16h | 37,062 |
| 53 | 7.2.1 | Preparation for TP | 67h | 2026-07-24 | 2026-08-05 | 51 | 0.5d | 0d | Test Engineer 302; Test Engineer 404; Test Engineer 405; Test Engineer 2403 | 268h | 20,100 |
| 54 | 7.2.2 | Review TP meeting | 33.5h | 2026-08-05 | 2026-08-11 | 53 | 0.5d | 0d | Test Engineer 3; Test Engineer 2403; Test Engineer 2; Test Engineer 1; Test Engineer 4 | 167.5h | 12,562.5 |
| 55 | 7.2.3 | Rework | 29.33h | 2026-08-11 | 2026-08-17 | 54 | 0.5d | 0d | Test Engineer 3; Test Engineer 4 | 58.66h | 4,399.5 |
| 56 | 7.3 | Execute TP | 19.2d | 2026-08-17 | 2026-09-11 | 55 | 0.5d | 0d | Test Engineer 2; Test Engineer 302 | 307.2h | 23,040 |
| 57 | 7.4 | Fix found defects | 14.8d | 2026-09-11 | 2026-10-02 | 56 | 0.5d | 0d | Programmer 9; Programmer 10 | 236.8h | 22,496 |
| 58 | 7.5 | Test fixed defects | 9.25d | 2026-10-02 | 2026-10-15 | 57 | 0.5d | 0d | Test Engineer 2403; Test Engineer 405 | 148h | 11,100 |
| 59 | 8 | **Documentation** | 14d | 2026-10-15 | 2026-11-03 |  |  |  |  | 308.5h | 18,510 |
| 60 | 8.1 | User documentation | 28.2h | 2026-10-15 | 2026-10-21 | 58 | 0.5d | 0d | Documentation Engineer 1; Documentation Engineer 105 | 56.4h | 3,384 |
| 61 | 8.2 | **Review UD** | 10d | 2026-10-21 | 2026-11-03 |  |  |  |  | 252.1h | 15,126 |
| 62 | 8.2.1 | Preparation for UD review | 35.25h | 2026-10-21 | 2026-10-27 | 60 | 0.5d | 0d | Documentation Engineer 203; Documentation Engineer 204; Documentation Engineer 205; Documentation Engineer 206 | 141h | 8,460 |
| 63 | 8.2.2 | Review UD meeting | 14.1h | 2026-10-27 | 2026-10-29 | 62 | 0.5d | 0d | Documentation Engineer 1; Documentation Engineer 206; Documentation Engineer 105; Documentation Engineer 204; Documentation Engineer 205 | 70.5h | 4,230 |
| 64 | 8.2.3 | Rework | 20.3h | 2026-10-29 | 2026-11-03 | 63 | 0.5d | 0d | Documentation Engineer 1; Documentation Engineer 105 | 40.6h | 2,436 |
| 65 | 9 | **Training material** | 21d | 2026-11-03 | 2026-12-01 |  |  |  |  | 512.4h | 30,744 |
| 66 | 9.1 | Tutorial | 66.5h | 2026-11-03 | 2026-11-13 | 64 | 0.5d | 0d | Documentation Engineer 203; Documentation Engineer 204 | 133h | 7,980 |
| 67 | 9.2 | **Review tutorial** | 13d | 2026-11-13 | 2026-12-01 |  |  |  |  | 379.4h | 22,764 |
| 68 | 9.2.1 | Preparation for tutorial review | 53.2h | 2026-11-13 | 2026-11-24 | 66 | 0.5d | 0d | Documentation Engineer 1; Documentation Engineer 105; Documentation Engineer 205; Documentation Engineer 206 | 212.8h | 12,768 |
| 69 | 9.2.2 | Review tutorial meeting | 26.6h | 2026-11-24 | 2026-11-27 | 68 | 0.5d | 0d | Documentation Engineer 203; Documentation Engineer 204; Documentation Engineer 1; Documentation Engineer 206; Documentation Engineer 105 | 133h | 7,980 |
| 70 | 9.2.3 | Rework | 16.8h | 2026-11-27 | 2026-12-01 | 69 | 0.5d |  | Documentation Engineer 203; Documentation Engineer 204 | 33.6h | 2,016 |

Notes:
- 53: TE3, TE4 absent
- 54: TE3, TE4 returns
- 62: DE1, DE105 absent
- 63: DE1, DE105 returns
- 68: DE203,DE204 absent
- 69: DE203,DE204 returns
